# Reportes tentativo Interno2

Schedule from MS Project, 2005-01-27 to 2005-07-05.
a

## Calendars

- Estándar: Mon-Fri 09:00-13:00, 15:00-19:00; Sat-Sun off.

## Schedule

| ID | WBS | Task | Duration | Start | Finish | Predecessors | Total slack | Free slack |
| --- | --- | --- | --- | --- | --- | --- | --- | --- |
| 1 | 1 | **SEG** | 4.36d | 2005-01-27 | 2005-02-02 |  | 0.01d | 0d |
| 2 | 1.1 | SEG N061 Analisis Decu | 2.91h | 2005-01-27 | 2005-01-27 |  | 0.01d | 0d |
| 3 | 1.2 | SEG N061 Caso de Uso Obtener Listado de Funciones Totales | 7.27h | 2005-01-27 | 2005-01-28 | 2 | 0.01d | 0d |
| 4 | 1.3 | SEG N061 Caso de uso Obtener listado de funciones y usuarios | 7.27h | 2005-01-28 | 2005-01-31 | 3 | 0.01d | 0d |
| 5 | 1.4 | SEG N061 Caso de uso Obtener listado de usuarios-totales | 7.27h | 2005-01-31 | 2005-02-01 | 4 | 0.01d | 0d |
| 6 | 1.5 | SEG N061 Caso de uso Obtener listado de usuarios y funciones | 7.27h | 2005-02-01 | 2005-02-01 | 5 | 0.01d | 0d |
| 7 | 1.6 | SEG N061 Pruebas Unitarias | 2.91h | 2005-02-01 | 2005-02-02 | 6 | 0.01d |  |
| 8 | 2 | **ZON** | 3.27d | 2005-01-27 | 2005-02-01 |  | 0d |  |
| 9 | 2.1 | ZON N062 Analisis Decu | 2.18h | 2005-01-27 | 2005-01-27 |  | 0d |  |
| 10 | 2.2 | ZON N062 Caso de uso Generar Informe Relación de unidades administrativas | 7.27h | 2005-01-27 | 2005-01-28 | 9 | 0d |  |
| 11 | 2.3 | ZON N062 Caso de uso Productividad por Unidades Administrativas | 7.27h | 2005-01-28 | 2005-01-31 | 10 | 0d |  |
| 12 | 2.4 | ZON N062 Caso de uso Generar Informe Clientes que cambian Unidades Administrativas | 7.27h | 2005-01-31 | 2005-01-31 | 11 | 0d |  |
| 13 | 2.5 | ZON N062 Pruebas Unitarias | 2.18h | 2005-01-31 | 2005-02-01 | 12 | 0d |  |
| 14 | 3 | **MAE** | 5.45d | 2005-02-02 | 2005-02-09 | 1 | 0.01d | 0d |
| 15 | 3.1 | MAE N064 Analisis Decu | 3.64h | 2005-02-02 | 2005-02-02 |  | 0.01d | 0d |
| 16 | 3.2 | MAE N064 Caso de uso Obtener movimiento diario de almacén | 7.27h | 2005-02-02 | 2005-02-03 | 15 | 0.01d | 0d |
| 17 | 3.3 | MAE N064 Caso de uso Obtener padrón de clientes | 7.27h | 2005-02-03 | 2005-02-04 | 16 | 0.01d | 0d |
| 18 | 3.4 | MAE N064 Caso de uso Obtener actividad por tipo de cliente por periodo | 7.27h | 2005-02-04 | 2005-02-07 | 17 | 0.01d | 0d |
| 19 | 3.5 | MAE N064 Caso de uso Obtener comparativo de ventas estimado vs. Real por país | 7.27h | 2005-02-07 | 2005-02-08 | 18 | 0.01d | 0d |
| 20 | 3.6 | MAE N064 Caso de uso Obtener flujo de clientes por Gerente de Zona | 7.27h | 2005-02-08 | 2005-02-09 | 19 | 0.01d | 0d |
| 21 | 3.7 | MAE N064 Pruebas Unitarias | 3.64h | 2005-02-09 | 2005-02-09 | 20 | 0.01d |  |
| 22 | 4 | **CRA** | 10.36d | 2005-02-01 | 2005-02-15 | 8 | 0d |  |
| 23 | 4.1 | CRA N063 Analisis Decu | 6.91h | 2005-02-01 | 2005-02-02 |  | 0d |  |
| 24 | 4.2 | CRA N063 Caso de Uso Generar Informe Inicio y Fin de Campaña | 7.27h | 2005-02-02 | 2005-02-03 | 23 | 0d |  |
| 25 | 4.3 | CRA N063 Caso de Uso Generar informe Estructura de Facturación | 7.27h | 2005-02-03 | 2005-02-03 | 24 | 0d |  |
| 26 | 4.4 | CRA N063 Caso de Uso Generar Informe Cronograma Total de Actividad | 7.27h | 2005-02-03 | 2005-02-04 | 25 | 0d |  |
| 27 | 4.5 | CRA N063 Caso de Uso Generar Informe Cronograma Calendario por Grupo | 7.27h | 2005-02-04 | 2005-02-07 | 26 | 0d |  |
| 28 | 4.6 | CRA N063 Caso de Uso Generar Informe Cronograma Total por Grupo | 7.27h | 2005-02-07 | 2005-02-08 | 27 | 0d |  |
| 29 | 4.7 | CRA N063 Caso de Uso Generar Informe Actividades de Hoy por Grupo | 7.27h | 2005-02-08 | 2005-02-09 | 28 | 0d |  |
| 30 | 4.8 | CRA N063 Caso de Uso Generar Informe Cronograma por Regional | 7.27h | 2005-02-09 | 2005-02-10 | 29 | 0d |  |
| 31 | 4.9 | CRA N063 Caso de Uso Generar Informe Actividades Totales Por Regiones | 7.27h | 2005-02-10 | 2005-02-11 | 30 | 0d |  |
| 32 | 4.10 | CRA N063 Caso de Uso Calcular Fecha Cronograma de Grupos de Zona | 10.91h | 2005-02-11 | 2005-02-14 | 31 | 0d |  |
| 33 | 4.11 | CRA N063 Pruebas Unitarias | 6.91h | 2005-02-14 | 2005-02-15 | 32 | 0d |  |

| ID | WBS | Task | Duration | Start | Finish | Predecessors | Total slack | Free slack |
| --- | --- | --- | --- | --- | --- | --- | --- | --- |
| 34 | 5 | **PRE** | 8.18d | 2005-02-09 | 2005-02-21 | 14 | 0.01d | 0d |
| 35 | 5.1 | PRE N065 Analisis Decu | 5.45h | 2005-02-09 | 2005-02-10 |  | 0.01d | 0d |
| 36 | 5.2 | PRE N065 Caso de Uso Generar Informe de Configuración de Matriz de Facturación | 7.27h | 2005-02-10 | 2005-02-11 | 35 | 0.01d | 0d |
| 37 | 5.3 | PRE N065 Caso de Uso Generar Reporte de Guía de Productos | 3.64h | 2005-02-11 | 2005-02-11 | 36 | 0.01d | 0d |
| 38 | 5.4 | PRE N065 Caso de Uso Generar Reporte de Estadísticas de Matriz de Facturación | 10.91h | 2005-02-11 | 2005-02-15 | 37 | 0.01d | 0d |
| 39 | 5.5 | PRE N065 Caso de Uso Generar Informe de Validación de Estimados | 10.91h | 2005-02-15 | 2005-02-16 | 38 | 0.01d | 0d |
| 40 | 5.6 | PRE N065 Caso de Uso Generar Informe de Matriz de Recuperación | 10.91h | 2005-02-16 | 2005-02-17 | 39 | 0.01d | 0d |
| 41 | 5.7 | PRE N065 Caso de Uso Generar Informe de Reemplazos y Alternativos | 10.91h | 2005-02-17 | 2005-02-21 | 40 | 0.01d | 0d |
| 42 | 5.8 | PRE N065 Pruebas Unitarias | 5.45h | 2005-02-21 | 2005-02-21 | 41 | 0.01d |  |
| 43 | 6 | **DTO** | 6.54d | 2005-02-15 | 2005-02-24 | 22 | 0d |  |
| 44 | 6.1 | DTO N067 Analisis Decu | 4.36h | 2005-02-15 | 2005-02-16 |  | 0d |  |
| 45 | 6.2 | DTO N067 Caso de Uso Generar Informe Relación de tipos de descuentos | 10.91h | 2005-02-16 | 2005-02-17 | 44 | 0d |  |
| 46 | 6.3 | DTO N067 Caso de Uso Generar Informe Transacción por tipo de descuento | 10.91h | 2005-02-17 | 2005-02-18 | 45 | 0d |  |
| 47 | 6.4 | DTO N067 Caso de Uso Generar Informe Transacción por cliente | 10.91h | 2005-02-18 | 2005-02-22 | 46 | 0d |  |
| 48 | 6.5 | DTO N067 Caso de Uso Generar Informe Matrices de descuento | 10.91h | 2005-02-22 | 2005-02-23 | 47 | 0d |  |
| 49 | 6.6 | DTO N067 Pruebas Unitarias | 4.36h | 2005-02-23 | 2005-02-24 | 48 | 0d |  |
| 50 | 7 | **MAV** | 4.36d | 2005-02-21 | 2005-02-28 | 34 | 0.01d | 0d |
| 51 | 7.1 | MAV N068 Analisis Decu | 2.91h | 2005-02-21 | 2005-02-22 |  | 0.01d | 0d |
| 52 | 7.2 | MAV N068 Caso de Uso Generar Informe Matrices de descuento | 7.27h | 2005-02-22 | 2005-02-23 | 51 | 0.01d | 0d |
| 53 | 7.3 | MAV N068 Caso de Uso Generar Informe status de producto de MAV | 10.91h | 2005-02-23 | 2005-02-24 | 52 | 0.01d | 0d |
| 54 | 7.4 | MAV N068 Caso de Uso Generar Informe Facturación entre Compañías | 10.91h | 2005-02-24 | 2005-02-25 | 53 | 0.01d | 0d |
| 55 | 7.5 | MAV N068 Pruebas Unitarias | 2.91h | 2005-02-25 | 2005-02-28 | 54 | 0.01d |  |
| 56 | 8 | **EDU** | 6.54d | 2005-02-24 | 2005-03-04 | 43 | 0d |  |
| 57 | 8.1 | EDU N071 Analisis Decu | 4.36h | 2005-02-24 | 2005-02-24 |  | 0d |  |
| 58 | 8.2 | EDU N071 Caso de uso Generar Informe Relación de Asistencia a Cursos | 7.27h | 2005-02-24 | 2005-02-25 | 57 | 0d |  |
| 59 | 8.3 | EDU N071 Caso de uso Generar Informe Seguimiento de los programas de Educación | 7.27h | 2005-02-25 | 2005-02-28 | 58 | 0d |  |
| 60 | 8.4 | EDU N071 Caso de uso Generar Informe Promoción Ciclo Pedidos-País | 7.27h | 2005-02-28 | 2005-03-01 | 59 | 0d |  |
| 61 | 8.5 | EDU N071 Caso de uso Generar Informe Ficha Técnica del Curso | 7.27h | 2005-03-01 | 2005-03-02 | 60 | 0d |  |
| 62 | 8.6 | EDU N071 Caso de uso Generar Informe de Medición | 7.27h | 2005-03-02 | 2005-03-03 | 61 | 0d |  |
| 63 | 8.7 | EDU N071 Caso de uso Generar Informe Historial de Participantes | 7.27h | 2005-03-03 | 2005-03-04 | 62 | 0d |  |
| 64 | 8.8 | EDU N071 Pruebas Unitarias | 4.36h | 2005-03-04 | 2005-03-04 | 63 | 0d |  |

| ID | WBS | Task | Duration | Start | Finish | Predecessors | Total slack | Free slack |
| --- | --- | --- | --- | --- | --- | --- | --- | --- |
| 65 | 9 | **CAR** | 3.27d | 2005-02-28 | 2005-03-03 | 50 | 0.01d | 0d |
| 66 | 9.1 | CAR N072 Analisis Decu | 2.18h | 2005-02-28 | 2005-02-28 |  | 0.01d | 0d |
| 67 | 9.2 | CAR N072 Caso de uso Obtener evaluación de crédito de solicitudes | 7.27h | 2005-02-28 | 2005-03-01 | 66 | 0.01d | 0d |
| 68 | 9.3 | CAR N072 Caso de uso Obtener resultados de administración de cartera por periodo | 7.27h | 2005-03-01 | 2005-03-02 | 67 | 0.01d | 0d |
| 69 | 9.4 | CAR N072 Caso de uso Obtener historial de crédito del cliente | 7.27h | 2005-03-02 | 2005-03-03 | 68 | 0.01d | 0d |
| 70 | 9.5 | CAR N072 Pruebas Unitarias | 2.18h | 2005-03-03 | 2005-03-03 | 69 | 0.01d |  |
| 71 | 10 | **PED** | 13.63d | 2005-03-04 | 2005-03-24 | 56 | 0d |  |
| 72 | 10.1 | PED N066 Analisis Decu | 9.09h | 2005-03-04 | 2005-03-07 |  | 0d |  |
| 73 | 10.2 | PED N066 Caso de Uso Generar Informe Validación de Pedidos con más de 20 unidades | 7.27h | 2005-03-07 | 2005-03-08 | 72 | 0d |  |
| 74 | 10.3 | PED N066 Caso de Uso Generar Informe Solicitudes de Pedidos Facturadas | 10.91h | 2005-03-08 | 2005-03-10 | 73 | 0d |  |
| 75 | 10.4 | PED N066 Caso de Uso Generar Informe Estado de Digitación Informe Diario | 7.27h | 2005-03-10 | 2005-03-11 | 74 | 0d |  |
| 76 | 10.5 | PED N066 Caso de Uso Generar Informe Estado de Digitación por Campaña | 7.27h | 2005-03-11 | 2005-03-11 | 75 | 0d |  |
| 77 | 10.6 | PED N066 Caso de Uso Generar Informe Estado de Digitación Informe por Digitador | 7.27h | 2005-03-11 | 2005-03-14 | 76 | 0d |  |
| 78 | 10.7 | PED N066 Caso de Uso Generar Informe Estado de Digitación Informe por Hora | 7.27h | 2005-03-14 | 2005-03-15 | 77 | 0d |  |
| 79 | 10.8 | PED N066 Caso de Uso Generar Informe Solicitudes de Pedidos Atendidas | 10.91h | 2005-03-15 | 2005-03-17 | 78 | 0d |  |
| 80 | 10.9 | PED N066 Caso de Uso Generar Informe Recepción de Pedidos Diarios | 10.91h | 2005-03-17 | 2005-03-18 | 79 | 0d |  |
| 81 | 10.10 | PED N066 Caso de Uso Generar Informe Reporte de Lotes | 10.91h | 2005-03-18 | 2005-03-21 | 80 | 0d |  |
| 82 | 10.11 | PED N066 Caso de Uso Generar Informe Reporte de Fletes | 10.91h | 2005-03-21 | 2005-03-23 | 81 | 0d |  |
| 83 | 10.12 | PED N066 Pruebas Unitarias | 9.09h | 2005-03-23 | 2005-03-24 | 82 | 0d |  |
| 84 | 11 | **CAL** | 7.63d | 2005-03-03 | 2005-03-15 | 65 | 0.01d | 0d |
| 85 | 11.1 | CAL N075 Analisis Decu | 5.09h | 2005-03-03 | 2005-03-04 |  | 0.01d | 0d |
| 86 | 11.2 | CAL N075 Caso de uso Obtener llamadas registradas rango fechas | 7.27h | 2005-03-04 | 2005-03-07 | 85 | 0.01d | 0d |
| 87 | 11.3 | CAL N075 Caso de uso Obtener llamadas registradas motivos y procesos | 7.27h | 2005-03-07 | 2005-03-08 | 86 | 0.01d | 0d |
| 88 | 11.4 | CAL N075 Caso de uso Obtener seguimiento de llamadas recibidas | 7.27h | 2005-03-08 | 2005-03-08 | 87 | 0.01d | 0d |
| 89 | 11.5 | CAL N075 Caso de uso Obtener llamadas por status | 7.27h | 2005-03-08 | 2005-03-09 | 88 | 0.01d | 0d |
| 90 | 11.6 | CAL N075 Caso de uso Obtener registro de postulaciones a consultoras | 7.27h | 2005-03-09 | 2005-03-10 | 89 | 0.01d | 0d |
| 91 | 11.7 | CAL N075 Caso de uso Obtener buzón de usuarios | 7.27h | 2005-03-10 | 2005-03-11 | 90 | 0.01d | 0d |
| 92 | 11.8 | CAL N075 Caso de uso Obtener llamadas en proceso | 7.27h | 2005-03-11 | 2005-03-14 | 91 | 0.01d | 0d |
| 93 | 11.9 | CAL N075 Pruebas Unitarias | 5.09h | 2005-03-14 | 2005-03-15 | 92 | 0.01d |  |

| ID | WBS | Task | Duration | Start | Finish | Predecessors | Total slack | Free slack |
| --- | --- | --- | --- | --- | --- | --- | --- | --- |
| 94 | 12 | **BEL** | 9.82d | 2005-03-24 | 2005-04-07 | 71 | 0d |  |
| 95 | 12.1 | BEL N076 Analisis Decu | 6.55h | 2005-03-24 | 2005-03-25 |  | 0d |  |
| 96 | 12.2 | BEL N076 Caso de uso Obtener discrepancias | 10.91h | 2005-03-25 | 2005-03-28 | 95 | 0d |  |
| 97 | 12.3 | BEL N076 Caso de uso Obtener liquidacion de ventas | 10.91h | 2005-03-28 | 2005-03-29 | 96 | 0d |  |
| 98 | 12.4 | BEL N076 Caso de uso Obtener consulta de movimientos de kardex | 10.91h | 2005-03-29 | 2005-03-31 | 97 | 0d |  |
| 99 | 12.5 | BEL N076 Caso de uso Obtener atencion de cierra puertas | 10.91h | 2005-03-31 | 2005-04-01 | 98 | 0d |  |
| 100 | 12.6 | BEL N076 Caso de uso Obtener hoja por especialista | 7.27h | 2005-04-01 | 2005-04-04 | 99 | 0d |  |
| 101 | 12.7 | BEL N076 Caso de uso Obtener reporte de stock por status | 7.27h | 2005-04-04 | 2005-04-05 | 100 | 0d |  |
| 102 | 12.8 | BEL N076 Caso de uso Obtener reporet de resultados por semana | 7.27h | 2005-04-05 | 2005-04-06 | 101 | 0d |  |
| 103 | 12.9 | BEL N076 Pruebas Unitarias | 6.55h | 2005-04-06 | 2005-04-07 | 102 | 0d |  |
| 104 | 13 | **FAC** | 9.82d | 2005-04-07 | 2005-04-20 | 94 | 0d |  |
| 105 | 13.1 | FAC N069 Analisis Decu | 6.55h | 2005-04-07 | 2005-04-07 |  | 0d |  |
| 106 | 13.2 | FAC N069 Caso de uso Generar Informe Relación de Facturas Emitidas | 7.27h | 2005-04-07 | 2005-04-08 | 105 | 0d |  |
| 107 | 13.3 | FAC N069 Caso de uso Resultados de la Facturación Diaria y Acumulado | 10.91h | 2005-04-08 | 2005-04-12 | 106 | 0d |  |
| 108 | 13.4 | FAC N069 Caso de uso Generar Informe Análisis de la Venta Diaria y Acumulado | 7.27h | 2005-04-12 | 2005-04-13 | 107 | 0d |  |
| 109 | 13.5 | FAC N069 Caso de uso Generar Informe Estado de la Facturación al Día XXXXXX | 10.91h | 2005-04-13 | 2005-04-14 | 108 | 0d |  |
| 110 | 13.6 | FAC N069 Caso de uso Generar Informe Resultados de la Facturación Diaria y Acumulado-Productos Faltantes | 10.91h | 2005-04-14 | 2005-04-15 | 109 | 0d |  |
| 111 | 13.7 | FAC N069 Caso de uso Generar Informe Notas de Crédito Ebelistas con RUC | 7.27h | 2005-04-15 | 2005-04-18 | 110 | 0d |  |
| 112 | 13.8 | FAC N069 Caso de uso Generar Informe Registro de Ventas- Documentos emitidos | 10.91h | 2005-04-18 | 2005-04-20 | 111 | 0d |  |
| 113 | 13.9 | FAC N069 Pruebas Unitarias | 6.55h | 2005-04-20 | 2005-04-20 | 112 | 0d |  |
| 114 | 14 | **CCC** | 16.36d | 2005-03-15 | 2005-04-06 | 84 | 0.01d | 0d |
| 115 | 14.1 | CCC N074 Analisis Decu | 10.91h | 2005-03-15 | 2005-03-16 |  | 0.01d | 0d |
| 116 | 14.2 | CCC N074 Caso de Uso Generar Informe Consulta de Cuenta Corriente | 10.91h | 2005-03-16 | 2005-03-17 | 115 | 0.01d | 0d |
| 117 | 14.3 | CCC N074 Caso de Uso Generar Informe Resumen de Cuentas Corrientes | 10.91h | 2005-03-17 | 2005-03-21 | 116 | 0.01d | 0d |
| 118 | 14.4 | CCC N074 Caso de Uso Generar Informe Antigüedad de Deudas | 7.27h | 2005-03-21 | 2005-03-22 | 117 | 0.01d | 0d |
| 119 | 14.5 | CCC N074 Caso de Uso Generar Informe Cheques Devueltos Cancelados | 7.27h | 2005-03-22 | 2005-03-23 | 118 | 0.01d | 0d |
| 120 | 14.6 | CCC N074 Caso de Uso Generar Informe Resumen de Ventas | 7.27h | 2005-03-23 | 2005-03-24 | 119 | 0.01d | 0d |
| 121 | 14.7 | CCC N074 Caso de Uso Generar Informe Consolidado de Cobranza | 7.27h | 2005-03-24 | 2005-03-24 | 120 | 0.01d | 0d |
| 122 | 14.8 | CCC N074 Caso de Uso Generar Informe Liquidación de Cobranza | 10.91h | 2005-03-24 | 2005-03-28 | 121 | 0.01d | 0d |
| 123 | 14.9 | CCC N074 Caso de Uso Generar Informe Aplicaciones en Cuenta Corriente | 10.91h | 2005-03-28 | 2005-03-29 | 122 | 0.01d | 0d |
| 124 | 14.10 | CCC N074 Caso de Uso Generar Informe Cheques Devueltos | 7.27h | 2005-03-29 | 2005-03-30 | 123 | 0.01d | 0d |
| 125 | 14.11 | CCC N074 Caso de Uso Generar Informe Cupones en trámite sin aplicar | 7.27h | 2005-03-30 | 2005-03-31 | 124 | 0.01d | 0d |
| 126 | 14.12 | CCC N074 Caso de Uso Generar Informe Pagos por Regularizar | 7.27h | 2005-03-31 | 2005-04-01 | 125 | 0.01d | 0d |
| 127 | 14.13 | CCC N074 Caso de Uso Generar Informe Movimiento de Almacén por Facturación | 7.27h | 2005-04-01 | 2005-04-04 | 126 | 0.01d | 0d |
| 128 | 14.14 | CCC N074 Caso de Uso Generar Informe base recuperación por campañas | 7.27h | 2005-04-04 | 2005-04-05 | 127 | 0.01d | 0d |
| 129 | 14.15 | CCC N074 Pruebas Unitarias | 10.91h | 2005-04-05 | 2005-04-06 | 128 | 0.01d |  |

| ID | WBS | Task | Duration | Start | Finish | Predecessors | Total slack | Free slack |
| --- | --- | --- | --- | --- | --- | --- | --- | --- |
| 130 | 15 | **COB** | 7.63d | 2005-04-06 | 2005-04-18 | 114 | 0.01d | 0d |
| 131 | 15.1 | COB N078 Analisis Decu | 5.09h | 2005-04-06 | 2005-04-07 |  | 0.01d | 0d |
| 132 | 15.2 | COB N078 Caso de uso Generar Informe Cartera de Cobranza | 7.27h | 2005-04-07 | 2005-04-08 | 131 | 0.01d | 0d |
| 133 | 15.3 | COB N078 Caso de uso Generar Informe Consulta de Cobranza | 7.27h | 2005-04-08 | 2005-04-11 | 132 | 0.01d | 0d |
| 134 | 15.4 | COB N078 Caso de uso Generar Informe Resultados de Cobranza por Etapa | 7.27h | 2005-04-11 | 2005-04-11 | 133 | 0.01d | 0d |
| 135 | 15.5 | COB N078 Caso de uso Generar Informe Gestión de Telecobro | 7.27h | 2005-04-11 | 2005-04-12 | 134 | 0.01d | 0d |
| 136 | 15.6 | COB N078 Caso de uso Generar Informe Comisiones a Pagar | 7.27h | 2005-04-12 | 2005-04-13 | 135 | 0.01d | 0d |
| 137 | 15.7 | COB N078 Caso de uso Generar Informe Recuperación por campaña | 7.27h | 2005-04-13 | 2005-04-14 | 136 | 0.01d | 0d |
| 138 | 15.8 | COB N078 Caso de uso Generar Informe Análisis de Cartera en Mora | 7.27h | 2005-04-14 | 2005-04-15 | 137 | 0.01d | 0d |
| 139 | 15.9 | COB N078 Pruebas Unitarias | 5.09h | 2005-04-15 | 2005-04-18 | 138 | 0.01d |  |
| 140 | 16 | **REC** | 32.18d | 2005-04-18 | 2005-06-01 | 130 | 0.01d | 0d |
| 141 | 16.1 | REC N079 Analisis Decu | 21.45h | 2005-04-18 | 2005-04-20 |  | 0.01d | 0d |
| 142 | 16.2 | REC N079 Caso de Uso Generar Informe Ranking Producto X unidad de negocio campaña referencia | 10.91h | 2005-04-20 | 2005-04-22 | 141 | 0.01d | 0d |
| 143 | 16.3 | REC N079 Caso de Uso Generar Informe Ranking Producto X unidad de negocio campaña Registro | 10.91h | 2005-04-22 | 2005-04-25 | 142 | 0.01d | 0d |
| 144 | 16.4 | REC N079 Caso de Uso Generar Informe Consulta de reclamo por productos | 10.91h | 2005-04-25 | 2005-04-27 | 143 | 0.01d | 0d |
| 145 | 16.5 | REC N079 Caso de Uso Generar Informe Consulta de reclamos por código de venta | 10.91h | 2005-04-27 | 2005-04-28 | 144 | 0.01d | 0d |
| 146 | 16.6 | REC N079 Caso de Uso Generar Informe Estadística de operaciones por Campaña | 10.91h | 2005-04-28 | 2005-04-29 | 145 | 0.01d | 0d |
| 147 | 16.7 | REC N079 Caso de Uso Generar Informe Estadísticas de Anulaciones por Campaña | 10.91h | 2005-04-29 | 2005-05-03 | 146 | 0.01d | 0d |
| 148 | 16.8 | REC N079 Caso de Uso Generar Informe Estadística de Reclamos de Premios | 7.27h | 2005-05-03 | 2005-05-04 | 147 | 0.01d | 0d |
| 149 | 16.9 | REC N079 Caso de Uso Generar Informe Estadística de Modalidad de Atención por Operación por Campaña | 10.91h | 2005-05-04 | 2005-05-05 | 148 | 0.01d | 0d |
| 150 | 16.10 | REC N079 Caso de Uso Generar Informe Estadística por usuario | 7.27h | 2005-05-05 | 2005-05-06 | 149 | 0.01d | 0d |
| 151 | 16.11 | REC N079 Caso de Uso Generar Informe Pendiente recepción en planta | 10.91h | 2005-05-06 | 2005-05-09 | 150 | 0.01d | 0d |
| 152 | 16.12 | REC N079 Caso de Uso Generar Informe Antigüedad de reclamos ingresados en una campaña | 10.91h | 2005-05-09 | 2005-05-11 | 151 | 0.01d | 0d |
| 153 | 16.13 | REC N079 Caso de Uso Generar Informe Atención con O/C y pedido de servicio | 7.27h | 2005-05-11 | 2005-05-11 | 152 | 0.01d | 0d |
| 154 | 16.14 | REC N079 Caso de Uso Generar Informe Estadística de Faltantes por día y región | 7.27h | 2005-05-11 | 2005-05-12 | 153 | 0.01d | 0d |
| 155 | 16.15 | REC N079 Caso de Uso Generar Informe Zonas con mayor porcentaje de reclamos | 7.27h | 2005-05-12 | 2005-05-13 | 154 | 0.01d | 0d |
| 156 | 16.16 | REC N079 Caso de Uso Generar Informe Zonas con porcentaje elevado de abonos | 7.27h | 2005-05-13 | 2005-05-16 | 155 | 0.01d | 0d |
| 157 | 16.17 | REC N079 Caso de Uso Generar Informe Consultoras con más reclamos | 7.27h | 2005-05-16 | 2005-05-17 | 156 | 0.01d | 0d |
| 158 | 16.18 | REC N079 Caso de Uso Generar Informe Consulta de Producto por Motivos | 10.91h | 2005-05-17 | 2005-05-18 | 157 | 0.01d | 0d |
| 159 | 16.19 | REC N079 Caso de Uso Generar Informe Indicadores de Gestión por País | 10.91h | 2005-05-18 | 2005-05-20 | 158 | 0.01d | 0d |
| 160 | 16.20 | REC N079 Caso de Uso Generar Informe Relación de Documentos recibidos | 10.91h | 2005-05-20 | 2005-05-23 | 159 | 0.01d | 0d |
| 161 | 16.21 | REC N079 Caso de Uso Generar Informe Orden de Recojo | 10.91h | 2005-05-23 | 2005-05-25 | 160 | 0.01d | 0d |
| 162 | 16.22 | REC N079 Caso de Uso Generar Informe Indicadores de Gestión Corporativos | 10.91h | 2005-05-25 | 2005-05-26 | 161 | 0.01d | 0d |
| 163 | 16.23 | REC N079 Responsable NMP | 10.91h | 2005-05-26 | 2005-05-27 | 162 | 0.01d | 0d |
| 164 | 16.24 | REC N079 Pruebas Unitarias | 21.45h | 2005-05-27 | 2005-06-01 | 163 | 0.01d |  |

| ID | WBS | Task | Duration | Start | Finish | Predecessors | Total slack |
| --- | --- | --- | --- | --- | --- | --- | --- |
| 165 | 17 | **INC** | 53.46d | 2005-04-20 | 2005-07-05 | 104 | 0d |
| 166 | 17.1 | INC N073 Analisis Decu | 35.64h | 2005-04-20 | 2005-04-27 |  | 0d |
| 167 | 17.2 | INC N073 Caso de Uso Generar Informe Pedidos a Escala | 10.91h | 2005-04-27 | 2005-04-28 | 166 | 0d |
| 168 | 17.3 | INC N073 Caso de Uso Generar Informe Evolución del Aporte | 10.91h | 2005-04-28 | 2005-05-02 | 167 | 0d |
| 169 | 17.4 | INC N073 Caso de Uso Generar Informe Comparativo de Países de Retención de Pedidos | 10.91h | 2005-05-02 | 2005-05-03 | 168 | 0d |
| 170 | 17.5 | INC N073 Caso de uso Generar Informe Consultoras Puntos Bonos | 10.91h | 2005-05-03 | 2005-05-04 | 169 | 0d |
| 171 | 17.6 | INC N073 Caso de Uso Generar Informe Relación de Ganadoras al Cierre | 10.91h | 2005-05-04 | 2005-05-06 | 170 | 0d |
| 172 | 17.7 | INC N073 Caso de Uso Generar Informe Relación Ganadoras en Campaña Despacho. | 10.91h | 2005-05-06 | 2005-05-09 | 171 | 0d |
| 173 | 17.8 | INC N073 Caso de Uso Generar Reporte de Premios Electivos | 10.91h | 2005-05-09 | 2005-05-10 | 172 | 0d |
| 174 | 17.9 | INC N073 Caso de Uso Rango de Cuotas (Venta Incremental) | 10.91h | 2005-05-10 | 2005-05-12 | 173 | 0d |
| 175 | 17.10 | INC N073 Caso de Uso Generar Informe Proyección Diaria de Concursos | 7.27h | 2005-05-12 | 2005-05-13 | 174 | 0d |
| 176 | 17.11 | INC N073 Caso de Uso Generar Informe Resultados de Despacho Diario X Concurso | 10.91h | 2005-05-13 | 2005-05-16 | 175 | 0d |
| 177 | 17.12 | INC N073 Caso de Uso Generar Informe Resultado al Cierre Concurso de Ventas. | 10.91h | 2005-05-16 | 2005-05-17 | 176 | 0d |
| 178 | 17.13 | INC N073 Caso de Uso Generar Informe Análisis de Concurso de Recomendación | 10.91h | 2005-05-17 | 2005-05-19 | 177 | 0d |
| 179 | 17.14 | INC N073 Caso de Uso Generar Informe Consultoras que Recomiendan detalle. | 10.91h | 2005-05-19 | 2005-05-20 | 178 | 0d |
| 180 | 17.15 | INC N073 Caso de Uso Generar Informe Consultoras que no cumplieron con Concurso de Recomendación. | 10.91h | 2005-05-20 | 2005-05-24 | 179 | 0d |
| 181 | 17.16 | INC N073 Caso de Uso Generar Informe Resultados y Puestos al Cierre de Campaña. | 10.91h | 2005-05-24 | 2005-05-25 | 180 | 0d |
| 182 | 17.17 | INC N073 Generar Informe Resultado al Cierre de Campaña | 10.91h | 2005-05-25 | 2005-05-26 | 181 | 0d |
| 183 | 17.18 | INC N073 Caso de Uso Generar Informe Premiación Variables por Pedido por Región por zona | 10.91h | 2005-05-26 | 2005-05-30 | 182 | 0d |
| 184 | 17.19 | INC N073 Caso de Uso Generar Informes Gerentes – Ganadoras Círculo de Excelencia. | 10.91h | 2005-05-30 | 2005-05-31 | 183 | 0d |
| 185 | 17.20 | INC N073 Caso de Uso Generar Informe Reconocimiento al Número de Ganadoras. | 10.91h | 2005-05-31 | 2005-06-01 | 184 | 0d |
| 186 | 17.21 | INC N073 Caso de Uso Resultados de variables por período por Región por Zona – Detalle | 10.91h | 2005-06-01 | 2005-06-03 | 185 | 0d |
| 187 | 17.22 | INC N073 Caso de Uso Generar Informe Ranking de Variables Resumen por Región por Zona | 10.91h | 2005-06-03 | 2005-06-06 | 186 | 0d |
| 188 | 17.23 | INC N073 Caso de Uso Generar Informe Resumen Anual de Incentivos | 10.91h | 2005-06-06 | 2005-06-07 | 187 | 0d |
| 189 | 17.24 | INC N073 Caso de Uso Generar Informe Ganadoras por Meta | 10.91h | 2005-06-07 | 2005-06-09 | 188 | 0d |
| 190 | 17.25 | INC N073 Caso de Uso Generar Informes Ganadoras por Meta y Constancia Total | 10.91h | 2005-06-09 | 2005-06-10 | 189 | 0d |
| 191 | 17.26 | INC N073 Caso de Uso Generar Informe Ganadoras por Meta y Constancia con Variaciones | 10.91h | 2005-06-10 | 2005-06-14 | 190 | 0d |
| 192 | 17.27 | INC N073 Caso de Uso Generar Informe No Ganadoras – Incumplimiento de Metas | 10.91h | 2005-06-14 | 2005-06-15 | 191 | 0d |
| 193 | 17.28 | INC N073 Caso de Uso Generar Informe Venta Consultoras Ganadoras y No Ganadoras | 10.91h | 2005-06-15 | 2005-06-16 | 192 | 0d |
| 194 | 17.29 | INC N073 Generar Informe No Cumplimiento Constancia Total | 10.91h | 2005-06-16 | 2005-06-20 | 193 | 0d |
| 195 | 17.30 | INC N073 Caso de Uso Generar Informe No cumplimiento de constancia un Pedido | 10.91h | 2005-06-20 | 2005-06-21 | 194 | 0d |
| 196 | 17.31 | INC N073 Caso de Uso Generar Informe Ganadoras por Unidad Administrativa. | 10.91h | 2005-06-21 | 2005-06-22 | 195 | 0d |
| 197 | 17.32 | INC N073 Caso de Uso Generar Reporte de Escala de Recomendación | 10.91h | 2005-06-22 | 2005-06-24 | 196 | 0d |
| 198 | 17.33 | INC N073 Caso de Uso Relación de Consultoras con Premio Monetario | 10.91h | 2005-06-24 | 2005-06-27 | 197 | 0d |
| 199 | 17.34 | INC N073 Caso de Uso Generar Informe Programa Red del Éxito | 10.91h | 2005-06-27 | 2005-06-28 | 198 | 0d |
| 200 | 17.35 | INC N073 Pruebas Unitarias | 35.64h | 2005-06-28 | 2005-07-05 | 199 | 0d |

| ID | WBS | Task | Duration | Start | Finish | Predecessors | Total slack | Free slack |
| --- | --- | --- | --- | --- | --- | --- | --- | --- |
| 201 | 18 | **COM** | 10.91d | 2005-06-01 | 2005-06-16 | 140 | 0.01d | 0d |
| 202 | 18.1 | COM N077 Analisis Decu | 7.27h | 2005-06-01 | 2005-06-02 |  | 0.01d | 0d |
| 203 | 18.2 | COM N077 Caso de uso Generar Informe Pago a Promotoras | 10.91h | 2005-06-02 | 2005-06-03 | 202 | 0.01d | 0d |
| 204 | 18.3 | COM N077 Caso de uso Generar Informe Recuperación Parcial a 31 días | 10.91h | 2005-06-03 | 2005-06-07 | 203 | 0.01d | 0d |
| 205 | 18.4 | COM N077 Caso de uso Generar Informe Pago a Promotoras | 10.91h | 2005-06-07 | 2005-06-08 | 204 | 0.01d | 0d |
| 206 | 18.5 | COM N077 Caso de Uso Generar Informe Ganancia Líderes Resumen y Detalle | 10.91h | 2005-06-08 | 2005-06-09 | 205 | 0.01d | 0d |
| 207 | 18.6 | COM N077 Caso de Uso Generar Informe Comisiones de Líderes por Sección-Cartera de Ingresos | 10.91h | 2005-06-09 | 2005-06-13 | 206 | 0.01d | 0d |
| 208 | 18.7 | COM N077 Caso de Uso Generar Informe Resumen de Comisiones por Periodo | 10.91h | 2005-06-13 | 2005-06-14 | 207 | 0.01d | 0d |
| 209 | 18.8 | COM N077 Caso de Uso Generar Informe Comisión de Gerentes de Zona | 7.27h | 2005-06-14 | 2005-06-15 | 208 | 0.01d | 0d |
| 210 | 18.9 | COM N077 Pruebas Unitarias | 7.27h | 2005-06-15 | 2005-06-16 | 209 | 0.01d |  |
| 211 | 19 | **FAC-DTR1** | 13.09d | 2005-06-16 | 2005-07-05 | 201 | 0.01d |  |
| 212 | 19.1 | FAC-DTR1 N070 Analisis Decu | 8.73h | 2005-06-16 | 2005-06-17 |  | 0.01d | 0d |
| 213 | 19.2 | FAC-DTR1 N070 Caso de uso Resultado Variables de Fuente de Venta por Campaña I | 7.27h | 2005-06-17 | 2005-06-20 | 212 | 0.01d | 0d |
| 214 | 19.3 | FAC-DTR1 N070 Caso de uso Resultado Variables de Fuente de Venta por Campaña II | 7.27h | 2005-06-20 | 2005-06-21 | 213 | 0.01d | 0d |
| 215 | 19.4 | FAC-DTR1 N070 Caso de uso Resultado de Zona por Campaña de Variables de Ventas III | 7.27h | 2005-06-21 | 2005-06-22 | 214 | 0.01d | 0d |
| 216 | 19.5 | FAC-DTR1 N070 Caso de uso Resultado Variables de Venta de Campaña XXXX / XX | 7.27h | 2005-06-22 | 2005-06-23 | 215 | 0.01d | 0d |
| 217 | 19.6 | FAC-DTR1 N070 Caso de uso Cuadro de Análisis por Segmento de Consultora | 7.27h | 2005-06-23 | 2005-06-23 | 216 | 0.01d | 0d |
| 218 | 19.7 | FAC-DTR1 N070 Caso de uso Cuadro de Análisis por Segmento de Consultora II | 7.27h | 2005-06-23 | 2005-06-24 | 217 | 0.01d | 0d |
| 219 | 19.8 | FAC-DTR1 N070 Caso de uso Listado de Nuevas | 7.27h | 2005-06-24 | 2005-06-27 | 218 | 0.01d | 0d |
| 220 | 19.9 | FAC-DTR1 N070 Caso de uso Listado por Segmento de Consultora III | 7.27h | 2005-06-27 | 2005-06-28 | 219 | 0.01d | 0d |
| 221 | 19.10 | FAC-DTR1 N070 Caso de uso Listado de Posibles Reingresos | 7.27h | 2005-06-28 | 2005-06-29 | 220 | 0.01d | 0d |
| 222 | 19.11 | FAC-DTR1 N070 Caso de uso Listado de Reconocimientos - Cumpleaños del Mes | 7.27h | 2005-06-29 | 2005-06-30 | 221 | 0.01d | 0d |
| 223 | 19.12 | FAC-DTR1 N070 Caso de uso Listado de Reconocimientos - Aniversario Campaña C-XX | 7.27h | 2005-06-30 | 2005-07-01 | 222 | 0.01d | 0d |
| 224 | 19.13 | FAC-DTR1 N070 Caso de uso Ranking de Consultoras - Circulo de Honor | 7.27h | 2005-07-01 | 2005-07-04 | 223 | 0.01d | 0d |
| 225 | 19.14 | FAC-DTR1 N070 Pruebas Unitarias | 8.73h | 2005-07-04 | 2005-07-05 | 224 | 0.01d |  |
